Schedule from MS Project, 2016-07-01 to 2017-04-20, costs in ¥.
Microsoft

## Calendars

- 标准: Mon-Fri 08:00-12:00, 13:00-17:00; Sat-Sun off.

## Resources

| Resource | Rate |
| --- | --- |
| 项目经理 | 68.2 |
| 配置管理 | 45.5 |
| 开发者 | 68.2 |
| 测试经理 | 68.2 |
| 测试人员 | 45.5 |
| 业务经理 | 68.2 |

## Schedule

| ID | WBS | Task | Type | Duration | Start | Finish | Predecessors | Baseline start | Baseline finish | Baseline duration | Baseline 1 start | Baseline 1 finish | Total slack | Resources | Work | Cost | Baseline cost |
| --- | --- | --- | --- | --- | --- | --- | --- | --- | --- | --- | --- | --- | --- | --- | --- | --- | --- |
| 1 | 1 | **Imagine图片分享网站** |  | 202d | 2016-07-01 | 2017-04-10 |  | 2016-07-01 | 2017-04-10 | 202d | 2016-07-01 | 2017-04-10 |  |  | 2592h | 166,976.2 | 157,873.59 |
| 2 | 1.1 | **立项** |  | 4d? | 2016-07-01 | 2016-07-07 |  | 2016-07-01 | 2016-07-07 | 4d? | 2016-07-01 | 2016-07-07 | 0d |  | 48h | 3,239.4 | 3,273.6 |
| 3 | 1.1.1 | 授权 |  | 2d | 2016-07-01 | 2016-07-05 |  | 2016-07-01 | 2016-07-05 | 2d | 2016-07-01 | 2016-07-05 | 0d | 项目经理; 业务经理 | 32h | 2,159.6 | 2,182.4 |
| 4 | 1.1.2 | 确定项目组人员 |  | 1d? | 2016-07-06 | 2016-07-07 | 3FS+1d | 2016-07-06 | 2016-07-07 | 1d? | 2016-07-06 | 2016-07-07 | 0d | 项目经理; 业务经理 | 16h | 1,079.8 | 1,091.2 |
| 5 | 1.2 | **可行性研究** |  | 8d? | 2016-07-08 | 2016-07-20 | 2FS+1d | 2016-07-08 | 2016-07-20 | 8d? | 2016-07-08 | 2016-07-20 | 0d |  | 96h | 6,478.8 | 6,547.2 |
| 6 | 1.2.1 | 可行性调研 |  | 3d | 2016-07-08 | 2016-07-13 |  | 2016-07-08 | 2016-07-13 | 3d | 2016-07-08 | 2016-07-13 | 0d | 项目经理; 业务经理 | 48h | 3,239.4 | 3,273.6 |
| 7 | 1.2.2 | 制作可行性报告 |  | 2d | 2016-07-14 | 2016-07-18 | 6FS+1d | 2016-07-14 | 2016-07-18 | 2d | 2016-07-14 | 2016-07-18 | 0d | 项目经理; 业务经理 | 32h | 2,159.6 | 2,182.4 |
| 8 | 1.2.3 | 可行性报告审批 |  | 1d? | 2016-07-19 | 2016-07-20 | 7FS+1d | 2016-07-19 | 2016-07-20 | 1d? | 2016-07-19 | 2016-07-20 | 0d | 项目经理; 业务经理 | 16h | 1,079.8 | 1,091.2 |
| 9 | 1.2.4 | 可行性报告完成 | milestone | 0d | 2016-07-20 | 2016-07-20 | 8 | 2016-07-20 | 2016-07-20 | 0d | 2016-07-20 | 2016-07-20 | 0d |  |  |  |  |
| 10 | 1.3 | **项目计划** |  | 11d | 2016-07-21 | 2016-08-05 | 5FS+1d | 2016-07-21 | 2016-08-05 | 11d | 2016-07-21 | 2016-08-05 | 0d |  | 128h | 8,649.8 | 8,729.6 |
| 11 | 1.3.1 | 工作量估算 |  | 2d | 2016-07-21 | 2016-07-25 |  | 2016-07-21 | 2016-07-25 | 2d | 2016-07-21 | 2016-07-25 | 0d | 项目经理; 业务经理 | 32h | 2,159.6 | 2,182.4 |
| 12 | 1.3.2 | 风险评估 |  | 2d | 2016-07-26 | 2016-07-28 | 11FS+1d | 2016-07-26 | 2016-07-28 | 2d | 2016-07-26 | 2016-07-28 | 0d | 项目经理; 业务经理 | 32h | 2,159.6 | 2,182.4 |
| 13 | 1.3.3 | 项目管理计划编写 |  | 3d | 2016-07-29 | 2016-08-03 | 12FS+1d | 2016-07-29 | 2016-08-03 | 3d | 2016-07-29 | 2016-08-03 | 0d | 项目经理; 业务经理 | 48h | 3,250.8 | 3,273.6 |
| 14 | 1.3.4 | 项目管理计划评审 |  | 1d | 2016-08-04 | 2016-08-05 | 13FS+1d | 2016-08-04 | 2016-08-05 | 1d | 2016-08-04 | 2016-08-05 | 0d | 项目经理; 业务经理 | 16h | 1,079.8 | 1,091.2 |
| 15 | 1.3.5 | 项目管理计划完成 | milestone | 0d | 2016-08-05 | 2016-08-05 | 14 | 2016-08-05 | 2016-08-05 | 0d | 2016-08-05 | 2016-08-05 | 0d |  |  |  |  |
| 16 | 1.4 | **第一增量** |  | 91d? | 2016-08-08 | 2016-12-13 | 10FS+1d | 2016-08-08 | 2016-11-30 | 82d? | 2016-08-08 | 2016-12-07 | 0d |  | 1080h | 70,170.6 | 60,566.4 |
| 17 | 1.4.1 | **需求分析** |  | 10d? | 2016-08-08 | 2016-08-22 |  | 2016-08-08 | 2016-08-15 | 5d? | 2016-08-08 | 2016-08-22 | 0d |  | 200h | 13,583 | 8,184 |
| 18 | 1.4.1.1 | 需求分析建模 |  | 7d | 2016-08-08 | 2016-08-17 |  | 2016-08-08 | 2016-08-10 | 2d | 2016-08-08 | 2016-08-17 | 0d | 项目经理; 业务经理; 开发者 | 128h | 8,706.8 | 3,273.6 |
| 19 | 1.4.1.2 | 需求分析报告撰写 |  | 2d | 2016-08-17 | 2016-08-19 | 18 | 2016-08-10 | 2016-08-12 | 2d | 2016-08-17 | 2016-08-19 | 0d | 项目经理; 业务经理; 开发者 | 48h | 3,250.8 | 3,273.6 |
| 20 | 1.4.1.3 | 需求分析报告评审 |  | 1d? | 2016-08-19 | 2016-08-22 | 19 | 2016-08-12 | 2016-08-15 | 1d? | 2016-08-19 | 2016-08-22 | 0d | 开发者; 项目经理; 业务经理 | 24h | 1,625.4 | 1,636.8 |
| 21 | 1.4.1.4 | 需求分析报告完成 | milestone | 0d | 2016-08-22 | 2016-08-22 | 20 | 2016-08-15 | 2016-08-15 | 0d | 2016-08-22 | 2016-08-22 | 0d |  |  |  |  |
| 22 | 1.4.2 | **概要设计** |  | 7d? | 2016-08-23 | 2016-09-01 | 17FS+1d | 2016-08-16 | 2016-08-25 | 7d? | 2016-08-23 | 2016-09-01 | 0d |  | 80h | 5,399 | 5,456 |
| 23 | 1.4.2.1 | 系统架构图设计 |  | 2d | 2016-08-23 | 2016-08-25 |  | 2016-08-16 | 2016-08-18 | 2d | 2016-08-23 | 2016-08-25 | 0d | 开发者; 项目经理 | 32h | 2,159.6 | 2,182.4 |
| 24 | 1.4.2.2 | 系统接口设计 |  | 2d | 2016-08-26 | 2016-08-30 | 23FS+1d | 2016-08-19 | 2016-08-23 | 2d | 2016-08-26 | 2016-08-30 | 0d | 开发者; 项目经理 | 32h | 2,159.6 | 2,182.4 |
| 25 | 1.4.2.3 | 概要设计评审 |  | 1d? | 2016-08-31 | 2016-09-01 | 24FS+1d | 2016-08-24 | 2016-08-25 | 1d? | 2016-08-31 | 2016-09-01 | 0d | 开发者; 项目经理 | 16h | 1,079.8 | 1,091.2 |
| 26 | 1.4.2.4 | 概要设计完成 | milestone | 0d | 2016-09-01 | 2016-09-01 | 25 | 2016-08-25 | 2016-08-25 | 0d | 2016-09-01 | 2016-09-01 | 0d |  |  |  |  |

| ID | WBS | Task | Type | Duration | Start | Finish | Predecessors | Baseline start | Baseline finish | Baseline duration | Baseline 1 start | Baseline 1 finish | Total slack | Resources | Work | Cost | Baseline cost |
| --- | --- | --- | --- | --- | --- | --- | --- | --- | --- | --- | --- | --- | --- | --- | --- | --- | --- |
| 27 | 1.4.3 | **详细设计** |  | 11d | 2016-09-02 | 2016-09-19 | 22FS+1d | 2016-08-26 | 2016-09-06 | 7d | 2016-09-02 | 2016-09-13 | 0d |  | 144h | 9,820.8 | 5,456 |
| 28 | 1.4.3.1 | 账户管理模块设计 |  | 2d | 2016-09-02 | 2016-09-06 |  | 2016-08-26 | 2016-08-30 | 2d | 2016-09-02 | 2016-09-06 | 0d | 测试经理; 开发者 | 32h | 2,182.4 | 2,182.4 |
| 29 | 1.4.3.2 | 浏览模块设计 |  | 6d | 2016-09-07 | 2016-09-15 | 28FS+1d | 2016-08-31 | 2016-09-02 | 2d | 2016-09-07 | 2016-09-09 | 0d | 测试经理; 开发者 | 96h | 6,547.2 | 2,182.4 |
| 30 | 1.4.3.3 | 详细设计评审 |  | 1d | 2016-09-16 | 2016-09-19 | 29FS+1d | 2016-09-05 | 2016-09-06 | 1d | 2016-09-12 | 2016-09-13 | 0d | 测试经理; 开发者 | 16h | 1,091.2 | 1,091.2 |
| 31 | 1.4.3.4 | 详细设计完成 | milestone | 0d | 2016-09-19 | 2016-09-19 | 30 | 2016-09-06 | 2016-09-06 | 0d | 2016-09-13 | 2016-09-13 | 0d |  |  |  |  |
| 32 | 1.4.4 | 设计阶段文档评审 |  | 2d | 2016-09-20 | 2016-09-22 | 27FS+1d | 2016-09-07 | 2016-09-09 | 2d | 2016-09-14 | 2016-09-16 | 0d | 测试经理; 开发者; 项目经理; 业务经理 | 64h | 4,342 | 4,364.8 |
| 33 | 1.4.5 | 设计阶段版本控制 |  | 2d | 2016-09-23 | 2016-09-27 | 32FS+1d | 2016-09-12 | 2016-09-14 | 2d | 2016-09-19 | 2016-09-21 | 0d | 配置管理; 项目经理 | 32h | 1,796.4 | 1,819.2 |
| 34 | 1.4.6 | 设计阶段完成 | milestone | 0d | 2016-09-27 | 2016-09-27 | 33 | 2016-09-14 | 2016-09-14 | 0d | 2016-09-21 | 2016-09-21 | 0d |  |  |  |  |
| 35 | 1.4.7 | **代码实现** |  | 32d | 2016-09-28 | 2016-11-11 | 34FS+1d | 2016-09-15 | 2016-10-31 | 32d | 2016-09-22 | 2016-11-07 | 0d |  | 240h | 16,356.6 | 16,368 |
| 36 | 1.4.7.1 | 开发人员任务分配 |  | 1d | 2016-09-28 | 2016-09-29 |  | 2016-09-15 | 2016-09-16 | 1d | 2016-09-22 | 2016-09-23 | 0d | 开发者; 项目经理 | 16h | 1,079.8 | 1,091.2 |
| 37 | 1.4.7.2 | 开发平台搭建 |  | 3d | 2016-09-30 | 2016-10-05 | 36FS+1d | 2016-09-19 | 2016-09-22 | 3d | 2016-09-26 | 2016-09-29 | 0d | 开发者 | 24h | 1,636.8 | 1,636.8 |
| 38 | 1.4.7.3 | 程序编码 |  | 20d | 2016-10-06 | 2016-11-03 | 37FS+1d | 2016-09-23 | 2016-10-21 | 20d | 2016-09-30 | 2016-10-28 | 0d | 开发者 | 160h | 10,912 | 10,912 |
| 39 | 1.4.7.4 | 开发人员测试 |  | 5d | 2016-11-04 | 2016-11-11 | 38FS+1d | 2016-10-24 | 2016-10-31 | 5d | 2016-10-31 | 2016-11-07 | 0d | 开发者 | 40h | 2,728 | 2,728 |
| 40 | 1.4.7.5 | 代码实现完成 | milestone | 0d | 2016-11-11 | 2016-11-11 | 39 | 2016-10-31 | 2016-10-31 | 0d | 2016-11-07 | 2016-11-07 | 0d |  |  |  |  |
| 41 | 1.4.8 | **质量控制** |  | 12d | 2016-11-14 | 2016-11-30 | 35FS+1d | 2016-11-01 | 2016-11-17 | 12d | 2016-11-08 | 2016-11-24 | 0d |  | 208h | 12,006.4 | 12,006.4 |
| 42 | 1.4.8.1 | 代码走查 |  | 2d | 2016-11-14 | 2016-11-16 |  | 2016-11-01 | 2016-11-03 | 2d | 2016-11-08 | 2016-11-10 | 0d | 测试经理; 测试人员; 开发者 | 48h | 2,910.4 | 2,910.4 |
| 43 | 1.4.8.2 | **单元测试** |  | 10d | 2016-11-16 | 2016-11-30 | 42 | 2016-11-03 | 2016-11-17 | 10d | 2016-11-10 | 2016-11-24 | 0d |  | 160h | 9,096 | 9,096 |
| 44 | 1.4.8.2.1 | 测试套件 |  | 5d | 2016-11-16 | 2016-11-23 |  | 2016-11-03 | 2016-11-10 | 5d | 2016-11-10 | 2016-11-17 | 0d | 测试经理; 测试人员 | 80h | 4,548 | 4,548 |
| 45 | 1.4.8.2.2 | 代码修改 |  | 2d | 2016-11-23 | 2016-11-25 | 44 | 2016-11-10 | 2016-11-14 | 2d | 2016-11-17 | 2016-11-21 | 0d | 测试经理; 测试人员 | 32h | 1,819.2 | 1,819.2 |
| 46 | 1.4.8.2.3 | 回归测试 |  | 3d | 2016-11-25 | 2016-11-30 | 45 | 2016-11-14 | 2016-11-17 | 3d | 2016-11-21 | 2016-11-24 | 0d | 测试经理; 测试人员 | 48h | 2,728.8 | 2,728.8 |
| 47 | 1.4.8.2.4 | 单元测试完成 | milestone | 0d | 2016-11-30 | 2016-11-30 | 46 | 2016-11-17 | 2016-11-17 | 0d | 2016-11-24 | 2016-11-24 | 0d |  |  |  |  |
| 48 | 1.4.8.3 | 质量控制完成 | milestone | 0d | 2016-11-30 | 2016-11-30 | 43 | 2016-11-17 | 2016-11-17 | 0d | 2016-11-24 | 2016-11-24 | 0d |  |  |  |  |
| 49 | 1.4.9 | 开发阶段版本控制 |  | 2d | 2016-12-01 | 2016-12-05 | 41FS+1d | 2016-11-18 | 2016-11-22 | 2d | 2016-11-25 | 2016-11-29 | 0d | 配置管理; 项目经理 | 32h | 1,796.4 | 1,819.2 |
| 50 | 1.4.10 | 开发完成 | milestone | 0d | 2016-12-05 | 2016-12-05 | 49 | 2016-11-22 | 2016-11-22 | 0d | 2016-11-29 | 2016-11-29 | 0d |  |  |  |  |
| 51 | 1.4.11 | 阶段评审 |  | 2d | 2016-12-06 | 2016-12-08 | 50FS+1d | 2016-11-23 | 2016-11-25 | 2d | 2016-11-30 | 2016-12-02 | 0d | 测试经理; 测试人员; 开发者; 项目经理; 业务经理 | 80h | 5,070 | 5,092.8 |
| 52 | 1.4.12 | 第一增量版本控制 |  | 2d | 2016-12-09 | 2016-12-13 | 51FS+1d | 2016-11-28 | 2016-11-30 | 2d | 2016-12-05 | 2016-12-07 | 0d |  |  |  |  |
| 53 | 1.4.13 | 第一增量完成 | milestone | 0d | 2016-12-13 | 2016-12-13 | 52 | 2016-11-30 | 2016-11-30 | 0d | 2016-12-07 | 2016-12-07 | 0d |  |  |  |  |

| ID | WBS | Task | Type | Duration | Start | Finish | Predecessors | Baseline start | Baseline finish | Baseline duration | Baseline 1 start | Baseline 1 finish | Total slack | Resources | Work | Cost | Baseline cost |
| --- | --- | --- | --- | --- | --- | --- | --- | --- | --- | --- | --- | --- | --- | --- | --- | --- | --- |
| 54 | 1.5 | **第二增量** |  | 47d? | 2016-12-14 | 2017-02-17 | 16FS+1d | 2016-12-01 | 2017-02-06 | 47d? | 2016-12-08 | 2017-02-13 | 0d |  | 536h | 33,898.8 | 34,012.8 |
| 55 | 1.5.1 | **设计** |  | 9d? | 2016-12-14 | 2016-12-27 |  | 2016-12-01 | 2016-12-14 | 9d? | 2016-12-08 | 2016-12-21 | 0d |  | 136h | 9,025.2 | 9,093.6 |
| 56 | 1.5.1.1 | 社交模块设计 |  | 2d | 2016-12-14 | 2016-12-16 |  | 2016-12-01 | 2016-12-05 | 2d | 2016-12-08 | 2016-12-12 | 0d | 测试经理; 开发者; 项目经理 | 48h | 3,250.8 | 3,273.6 |
| 57 | 1.5.1.2 | 个人主页管理模块设计 |  | 2d | 2016-12-19 | 2016-12-21 | 56FS+1d | 2016-12-06 | 2016-12-08 | 2d | 2016-12-13 | 2016-12-15 | 0d | 测试经理; 开发者; 项目经理 | 48h | 3,250.8 | 3,273.6 |
| 58 | 1.5.1.3 | 设计评审 |  | 1d? | 2016-12-22 | 2016-12-23 | 57FS+1d | 2016-12-09 | 2016-12-12 | 1d? | 2016-12-16 | 2016-12-19 | 0d | 测试经理; 开发者; 项目经理 | 24h | 1,625.4 | 1,636.8 |
| 59 | 1.5.1.4 | 设计文档版本控制 |  | 1d? | 2016-12-26 | 2016-12-27 | 58FS+1d | 2016-12-13 | 2016-12-14 | 1d? | 2016-12-20 | 2016-12-21 | 0d | 配置管理; 项目经理 | 16h | 898.2 | 909.6 |
| 60 | 1.5.1.5 | 设计阶段完成 | milestone | 0d | 2016-12-27 | 2016-12-27 | 59 | 2016-12-14 | 2016-12-14 | 0d | 2016-12-21 | 2016-12-21 | 0d |  |  |  |  |
| 61 | 1.5.2 | **代码实现** |  | 18d? | 2016-12-28 | 2017-01-23 | 55FS+1d | 2016-12-15 | 2017-01-10 | 18d? | 2016-12-22 | 2017-01-17 | 0d |  | 120h | 8,184 | 8,184 |
| 62 | 1.5.2.1 | 任务分配 |  | 1d? | 2016-12-28 | 2016-12-29 |  | 2016-12-15 | 2016-12-16 | 1d? | 2016-12-22 | 2016-12-23 | 0d | 开发者 | 8h | 545.6 | 545.6 |
| 63 | 1.5.2.2 | 开发环境搭建 |  | 2d | 2016-12-30 | 2017-01-03 | 62FS+1d | 2016-12-19 | 2016-12-21 | 2d | 2016-12-26 | 2016-12-28 | 0d | 开发者 | 16h | 1,091.2 | 1,091.2 |
| 64 | 1.5.2.3 | 程序编码 |  | 10d? | 2017-01-04 | 2017-01-18 | 63FS+1d | 2016-12-22 | 2017-01-05 | 10d? | 2016-12-29 | 2017-01-12 | 0d | 开发者 | 80h | 5,456 | 5,456 |
| 65 | 1.5.2.4 | 开发人员测试 |  | 2d | 2017-01-19 | 2017-01-23 | 64FS+1d | 2017-01-06 | 2017-01-10 | 2d | 2017-01-13 | 2017-01-17 | 0d | 开发者 | 16h | 1,091.2 | 1,091.2 |
| 66 | 1.5.2.5 | 代码实现完成 | milestone | 0d | 2017-01-23 | 2017-01-23 | 65 | 2017-01-10 | 2017-01-10 | 0d | 2017-01-17 | 2017-01-17 | 0d |  |  |  |  |
| 67 | 1.5.3 | **质量控制** |  | 12d? | 2017-01-24 | 2017-02-09 | 61FS+1d | 2017-01-11 | 2017-01-27 | 12d? | 2017-01-18 | 2017-02-03 | 0d |  | 184h | 10,551.2 | 10,551.2 |
| 68 | 1.5.3.1 | 代码走查 |  | 1d? | 2017-01-24 | 2017-01-25 |  | 2017-01-11 | 2017-01-12 | 1d? | 2017-01-18 | 2017-01-19 | 0d | 测试经理; 测试人员; 开发者 | 24h | 1,455.2 | 1,455.2 |
| 69 | 1.5.3.2 | **单元测试** |  | 5d? | 2017-01-25 | 2017-02-01 | 68 | 2017-01-12 | 2017-01-19 | 5d? | 2017-01-19 | 2017-01-26 | 0d |  | 80h | 4,548 | 4,548 |
| 70 | 1.5.3.2.1 | 测试套件 |  | 3d | 2017-01-25 | 2017-01-30 |  | 2017-01-12 | 2017-01-17 | 3d | 2017-01-19 | 2017-01-24 | 0d | 测试经理; 测试人员 | 48h | 2,728.8 | 2,728.8 |
| 71 | 1.5.3.2.2 | 代码修改 |  | 1d? | 2017-01-30 | 2017-01-31 | 70 | 2017-01-17 | 2017-01-18 | 1d? | 2017-01-24 | 2017-01-25 | 0d | 测试经理; 测试人员 | 16h | 909.6 | 909.6 |
| 72 | 1.5.3.2.3 | 回归测试 |  | 1d? | 2017-01-31 | 2017-02-01 | 71 | 2017-01-18 | 2017-01-19 | 1d? | 2017-01-25 | 2017-01-26 | 0d | 测试经理; 测试人员 | 16h | 909.6 | 909.6 |
| 73 | 1.5.3.2.4 | 单元测试完成 | milestone | 0d | 2017-02-01 | 2017-02-01 | 72 | 2017-01-19 | 2017-01-19 | 0d | 2017-01-26 | 2017-01-26 | 0d |  |  |  |  |
| 74 | 1.5.3.3 | **集成测试** |  | 5d | 2017-02-02 | 2017-02-09 | 69FS+1d | 2017-01-20 | 2017-01-27 | 5d | 2017-01-27 | 2017-02-03 | 0d |  | 80h | 4,548 | 4,548 |
| 75 | 1.5.3.3.1 | 测试环境搭建 |  | 2d | 2017-02-02 | 2017-02-06 |  | 2017-01-20 | 2017-01-24 | 2d | 2017-01-27 | 2017-01-31 | 0d | 测试经理; 测试人员 | 32h | 1,819.2 | 1,819.2 |
| 76 | 1.5.3.3.2 | 集成功能测试 |  | 3d | 2017-02-06 | 2017-02-09 | 75 | 2017-01-24 | 2017-01-27 | 3d | 2017-01-31 | 2017-02-03 | 0d | 测试经理; 测试人员 | 48h | 2,728.8 | 2,728.8 |
| 77 | 1.5.3.3.3 | 集成测试完成 | milestone | 0d | 2017-02-02 | 2017-02-02 |  | 2017-01-20 | 2017-01-20 | 0d | 2017-01-27 | 2017-01-27 | 5d |  |  |  |  |
| 78 | 1.5.3.4 | 测试完成 | milestone | 0d | 2017-02-09 | 2017-02-09 | 74 | 2017-01-27 | 2017-01-27 | 0d | 2017-02-03 | 2017-02-03 | 0d |  |  |  |  |
| 79 | 1.5.4 | 阶段评审 |  | 2d | 2017-02-10 | 2017-02-14 | 67FS+1d | 2017-01-30 | 2017-02-01 | 2d | 2017-02-06 | 2017-02-08 | 0d | 测试经理; 开发者; 项目经理; 业务经理 | 64h | 4,342 | 4,364.8 |
| 80 | 1.5.5 | 版本控制 |  | 2d | 2017-02-15 | 2017-02-17 | 79FS+1d | 2017-02-02 | 2017-02-06 | 2d | 2017-02-09 | 2017-02-13 | 0d | 配置管理; 项目经理 | 32h | 1,796.4 | 1,819.2 |
| 81 | 1.5.6 | 第二增量完成 | milestone | 0d | 2017-02-17 | 2017-02-17 | 80 | 2017-02-06 | 2017-02-06 | 0d | 2017-02-13 | 2017-02-13 | 0d |  |  |  |  |

| ID | WBS | Task | Type | Duration | Start | Finish | Predecessors | Baseline start | Baseline finish | Baseline duration | Baseline 1 start | Baseline 1 finish | Total slack | Resources | Work | Cost | Baseline cost |
| --- | --- | --- | --- | --- | --- | --- | --- | --- | --- | --- | --- | --- | --- | --- | --- | --- | --- |
| 82 | 1.6 | **第三增量** |  | 30d | 2017-02-20 | 2017-04-03 | 54FS+1d | 2017-02-07 | 2017-03-21 | 30d | 2017-02-14 | 2017-03-28 | 0d |  | 416h | 25,930.6 | 26,010.4 |
| 83 | 1.6.1 | **设计** |  | 4d | 2017-02-20 | 2017-02-24 |  | 2017-02-07 | 2017-02-13 | 4d | 2017-02-14 | 2017-02-20 | 0d |  | 72h | 4,876.2 | 4,910.4 |
| 84 | 1.6.1.1 | 外部接口模块设计 |  | 2d | 2017-02-20 | 2017-02-22 |  | 2017-02-07 | 2017-02-09 | 2d | 2017-02-14 | 2017-02-16 | 0d | 测试经理; 开发者; 项目经理 | 48h | 3,250.8 | 3,273.6 |
| 85 | 1.6.1.2 | 设计评审 |  | 1d | 2017-02-23 | 2017-02-24 | 84FS+1d | 2017-02-10 | 2017-02-13 | 1d | 2017-02-17 | 2017-02-20 | 0d | 测试经理; 开发者; 项目经理 | 24h | 1,625.4 | 1,636.8 |
| 86 | 1.6.1.3 | 设计完成 | milestone | 0d | 2017-02-24 | 2017-02-24 | 85 | 2017-02-13 | 2017-02-13 | 0d | 2017-02-20 | 2017-02-20 | 0d |  |  |  |  |
| 87 | 1.6.2 | **代码实现** |  | 7d | 2017-02-27 | 2017-03-08 | 83FS+1d | 2017-02-14 | 2017-02-23 | 7d | 2017-02-21 | 2017-03-02 | 0d |  | 56h | 3,819.2 | 3,819.2 |
| 88 | 1.6.2.1 | 程序编码 |  | 5d | 2017-02-27 | 2017-03-06 |  | 2017-02-14 | 2017-02-21 | 5d | 2017-02-21 | 2017-02-28 | 0d | 开发者 | 40h | 2,728 | 2,728 |
| 89 | 1.6.2.2 | 开发人员自测 |  | 2d | 2017-03-06 | 2017-03-08 | 88 | 2017-02-21 | 2017-02-23 | 2d | 2017-02-28 | 2017-03-02 | 0d | 开发者 | 16h | 1,091.2 | 1,091.2 |
| 90 | 1.6.2.3 | 代码实现完成 | milestone | 0d | 2017-03-08 | 2017-03-08 | 89 | 2017-02-23 | 2017-02-23 | 0d | 2017-03-02 | 2017-03-02 | 0d |  |  |  |  |
| 91 | 1.6.3 | **质量控制** |  | 11d | 2017-03-09 | 2017-03-24 | 87FS+1d | 2017-02-24 | 2017-03-13 | 11d | 2017-03-03 | 2017-03-20 | 0d |  | 192h | 11,096.8 | 11,096.8 |
| 92 | 1.6.3.1 | 代码走查 |  | 2d | 2017-03-09 | 2017-03-13 |  | 2017-02-24 | 2017-02-28 | 2d | 2017-03-03 | 2017-03-07 | 0d | 测试经理; 测试人员; 开发者 | 48h | 2,910.4 | 2,910.4 |
| 93 | 1.6.3.2 | 单元测试 |  | 2d | 2017-03-13 | 2017-03-15 | 92 | 2017-02-28 | 2017-03-02 | 2d | 2017-03-07 | 2017-03-09 | 0d | 测试经理; 测试人员 | 32h | 1,819.2 | 1,819.2 |
| 94 | 1.6.3.3 | 集成测试 |  | 2d | 2017-03-15 | 2017-03-17 | 93 | 2017-03-02 | 2017-03-06 | 2d | 2017-03-09 | 2017-03-13 | 0d | 测试经理; 测试人员 | 32h | 1,819.2 | 1,819.2 |
| 95 | 1.6.3.4 | 系统测试 |  | 5d | 2017-03-17 | 2017-03-24 | 94 | 2017-03-06 | 2017-03-13 | 5d | 2017-03-13 | 2017-03-20 | 0d | 测试经理; 测试人员 | 80h | 4,548 | 4,548 |
| 96 | 1.6.3.5 | 质量控制完成 | milestone | 0d | 2017-03-24 | 2017-03-24 | 95 | 2017-03-13 | 2017-03-13 | 0d | 2017-03-20 | 2017-03-20 | 0d |  |  |  |  |
| 97 | 1.6.4 | 阶段评审 |  | 2d | 2017-03-27 | 2017-03-29 | 91FS+1d | 2017-03-14 | 2017-03-16 | 2d | 2017-03-21 | 2017-03-23 | 0d | 测试经理; 开发者; 项目经理; 业务经理 | 64h | 4,342 | 4,364.8 |
| 98 | 1.6.5 | 版本控制 |  | 2d | 2017-03-30 | 2017-04-03 | 97FS+1d | 2017-03-17 | 2017-03-21 | 2d | 2017-03-24 | 2017-03-28 | 0d | 配置管理; 项目经理 | 32h | 1,796.4 | 1,819.2 |
| 99 | 1.6.6 | 第三增量完成 | milestone | 0d | 2017-04-03 | 2017-04-03 | 98 | 2017-03-21 | 2017-03-21 | 0d | 2017-03-28 | 2017-03-28 | 0d |  |  |  |  |
| 100 | 1.7 | **项目完成** |  | 12.75d | 2017-04-04 | 2017-04-20 | 82FS+1d | 2017-03-22 | 2017-04-10 | 13d | 2017-03-29 | 2017-04-14 | 0d |  | 288h | 18,608.2 | 18,733.6 |
| 101 | 1.7.1 | 验收测试 |  | 5d | 2017-04-04 | 2017-04-11 |  | 2017-03-22 | 2017-03-29 | 5d | 2017-03-29 | 2017-04-05 | 0d | 测试经理; 测试人员; 项目经理; 业务经理 | 160h | 9,947 | 10,004 |
| 102 | 1.7.2 | 项目部署 |  | 5d | 2017-04-12 | 2017-04-19 | 101FS+1d | 2017-03-30 | 2017-04-06 | 5d | 2017-04-06 | 2017-04-13 | 0d | 开发者; 项目经理; 业务经理 | 120h | 8,127 | 8,184 |
| 103 | 1.7.3 | 项目总结 |  | 0.75d | 2017-04-20 | 2017-04-20 | 102FS+1d | 2017-04-07 | 2017-04-10 | 1d | 2017-04-14 | 2017-04-14 | 0d | 项目经理 | 8h | 534.2 | 545.6 |
| 104 | 1.7.4 | 项目结束 | milestone | 0d | 2017-04-20 | 2017-04-20 | 103 | 2017-04-10 | 2017-04-10 | 0d | 2017-04-14 | 2017-04-14 | 0d |  |  |  |  |
